# 3-策划和执行营销事件

How a schedule from MS Project changed from version to version. A marks actual dates.

## Version 1 (saved 2018-01-29)

| ID | WBS | Task | Duration | Start | Finish | Predecessors | Total float |
| --- | --- | --- | --- | --- | --- | --- | --- |
| 1 | 1 | **策划和执行营销事件** | 53.1d? | 2018-01-29 08:00 | 2018-04-12 08:48 |  | 0d |
| 2 | 1.1 | **确定和策划事件** | 9d? | 2018-01-29 08:00 | 2018-02-08 17:00 |  | 0d |
| 3 |  | 选择事件类型 | 1d? | 2018-01-29 08:00 | 2018-01-29 17:00 |  | 44.1d |
| 4 |  | 确定目标听众 | 0.5d? | 2018-01-30 08:00 | 2018-01-30 12:00 | 3 | 44.1d |
| 5 |  | 确定需求生成过程 | 2d? | 2018-01-30 13:00 | 2018-02-01 12:00 | 4 | 44.1d |
| 6 |  | 确定事件目标 | 1d? | 2018-01-30 13:00 | 2018-01-31 12:00 | 4 | 1d |
| 7 |  | 陈述总体事件主题 | 3d? | 2018-02-01 13:00 | 2018-02-06 12:00 | 5, 6 | 44.1d |
| 8 |  | 确定初步事件日期和时间 | 0.5d? | 2018-02-06 13:00 | 2018-02-06 17:00 | 7 | 44.1d |
| 9 |  | 确定事件工作组 | 0.5d? | 2018-02-07 08:00 | 2018-02-07 12:00 | 8 | 44.1d |
| 10 |  | 制定事件日程 | 0.5d? | 2018-02-07 13:00 | 2018-02-07 17:00 | 9 | 44.1d |
| 11 |  | 确定交流过程和机制 | 1d? | 2018-02-08 08:00 | 2018-02-08 17:00 | 10 | 44.1d |
| 12 |  | 创建事件反馈机制 | 1d? | 2018-01-29 08:00 | 2018-01-29 17:00 |  | 0d |
| 13 |  | 确定事件预算 | 0.5d? | 2018-01-30 08:00 | 2018-01-30 12:00 | 12 | 0d |
| 14 |  | 完成事件策划 | 0d | 2018-01-30 12:00 | 2018-01-30 12:00 | 13 | 0d |
| 15 | 1.2 | **选择演讲者** | 9d? | 2018-01-30 13:00 | 2018-02-12 12:00 |  | 0d |
| 16 |  | 选择陈述主题 | 0.5d? | 2018-01-30 13:00 | 2018-01-30 17:00 | 14 | 0d |
| 17 |  | 确定演讲者 | 3d? | 2018-01-31 08:00 | 2018-02-02 17:00 | 16 | 0d |
| 18 |  | 获取演讲者信息 | 1d? | 2018-02-05 08:00 | 2018-02-05 17:00 | 17 | 0d |
| 19 |  | 确认演讲者和详细信息 | 0.5d? | 2018-02-06 08:00 | 2018-02-06 12:00 | 18 | 0d |
| 20 |  | 开发脚本 | 2d? | 2018-02-06 13:00 | 2018-02-08 12:00 | 19 | 0d |
| 21 |  | 发送公共交通和事件详细信息 | 0.5d? | 2018-02-08 13:00 | 2018-02-08 17:00 | 20 | 0d |
| 22 |  | 确认演讲者到达时间 | 0.5d? | 2018-02-09 08:00 | 2018-02-09 12:00 | 21 | 0d |
| 23 |  | 安排演讲者报酬 | 0.5d? | 2018-02-09 13:00 | 2018-02-09 17:00 | 22 | 0d |
| 24 |  | 获得演讲者的酬谢礼物 | 0.5d? | 2018-02-12 08:00 | 2018-02-12 12:00 | 23 | 0d |
| 25 |  | 完成演讲者选择 | 0d | 2018-02-12 12:00 | 2018-02-12 12:00 | 24 | 0d |
| 26 | 1.3 | **选择地点** | 7.5d? | 2018-01-30 13:00 | 2018-02-08 17:00 |  | 1.5d |
| 27 |  | 访问位置 | 1d? | 2018-01-30 13:00 | 2018-01-31 12:00 | 14 | 2.5d |
| 28 |  | 审阅目标听众和预测的出席人员 | 2d? | 2018-01-30 13:00 | 2018-02-01 12:00 | 14 | 1.5d |
| 29 |  | 选择事件位置 | 1d? | 2018-02-01 13:00 | 2018-02-02 12:00 | 27, 28 | 1.5d |
| 30 |  | 签署地点合同 | 2d? | 2018-02-02 13:00 | 2018-02-06 12:00 | 29 | 1.5d |
| 31 |  | 进行现场排练 | 1d? | 2018-02-06 13:00 | 2018-02-07 12:00 | 30 | 1.5d |
| 32 |  | 确认详细信息 | 1d? | 2018-02-07 13:00 | 2018-02-08 12:00 | 31 | 1.5d |
| 33 |  | 后续工作 | 0.5d? | 2018-02-08 13:00 | 2018-02-08 17:00 | 32 | 1.5d |
| 34 |  | 完成地点选择 | 0d | 2018-02-08 17:00 | 2018-02-08 17:00 | 33 | 1.5d |
| 35 | 1.4 | **选择和管理饮食招待** | 9d? | 2018-02-09 08:00 | 2018-02-21 17:00 |  | 35.1d |
| 36 |  | 选择食品选项 | 2d? | 2018-02-09 08:00 | 2018-02-12 17:00 | 34 | 35.1d |
| 37 |  | 获取饮食招待报价 | 2d? | 2018-02-13 08:00 | 2018-02-14 17:00 | 36 | 35.1d |
| 38 |  | 修改菜单项 | 1d? | 2018-02-15 08:00 | 2018-02-15 17:00 | 37 | 35.1d |
| 39 |  | 安排食品口味(如果需要) | 1d? | 2018-02-16 08:00 | 2018-02-16 17:00 | 36, 38 | 35.1d |
| 40 |  | 签署饮食招待合同 | 0.5d? | 2018-02-19 08:00 | 2018-02-19 12:00 | 39 | 35.1d |
| 41 |  | 确认详细信息 | 0.5d? | 2018-02-19 13:00 | 2018-02-19 17:00 | 40 | 35.1d |
| 42 |  | 进行事件日到达、布置、事件管理、拆卸 | 1d? | 2018-02-20 08:00 | 2018-02-20 17:00 | 41 | 35.1d |
| 43 |  | 与供应商一起审阅详细信息 | 0.5d? | 2018-02-21 08:00 | 2018-02-21 12:00 | 42 | 35.1d |
| 44 |  | 安排供应商付款 | 0.5d? | 2018-02-21 13:00 | 2018-02-21 17:00 | 43 | 35.1d |
| 45 |  | 完成饮食招待 | 0d | 2018-02-21 17:00 | 2018-02-21 17:00 | 44 | 35.1d |
| 46 | 1.5 | **打印和通讯** | 19.5d? | 2018-02-12 13:00 | 2018-03-09 17:00 |  | 0d |
| 47 |  | 确定请柬样式 | 2d? | 2018-02-12 13:00 | 2018-02-14 12:00 | 14, 25, 34 | 0d |
| 48 |  | 发送保存日期消息(如果需要) | 0.5d? | 2018-02-14 13:00 | 2018-02-14 17:00 | 47 | 0d |
| 49 |  | 编写请柬消息 | 2d? | 2018-02-15 08:00 | 2018-02-16 17:00 | 48 | 0d |
| 50 |  | 设计请柬 | 2d? | 2018-02-19 08:00 | 2018-02-20 17:00 | 49 | 0d |
| 51 |  | 获取请柬批准 | 2d? | 2018-02-21 08:00 | 2018-02-22 17:00 | 50 | 0d |
| 52 |  | 创建事件提醒副本 | 1d? | 2018-02-23 08:00 | 2018-02-23 17:00 | 51 | 0d |
| 53 |  | 设计事件提醒 | 1d? | 2018-02-26 08:00 | 2018-02-26 17:00 | 52 | 0d |
| 54 |  | 发送事件提醒 | 0.5d? | 2018-02-27 08:00 | 2018-02-27 12:00 | 53 | 0d |
| 55 |  | 材料副本创建日 | 2d? | 2018-02-27 13:00 | 2018-03-01 12:00 | 54 | 0d |
| 56 |  | 材料设计日 | 2d? | 2018-03-01 13:00 | 2018-03-05 12:00 | 55 | 0d |
| 57 |  | 材料打印日 | 3d? | 2018-03-05 13:00 | 2018-03-08 12:00 | 56 | 0d |
| 58 |  | 材料组装日 | 0.5d? | 2018-03-08 13:00 | 2018-03-08 17:00 | 57 | 0d |
| 59 |  | 与供应商一起审阅 | 0.5d? | 2018-03-09 08:00 | 2018-03-09 12:00 | 58 | 0d |
| 60 |  | 安排供应商付款 | 0.5d? | 2018-03-09 13:00 | 2018-03-09 17:00 | 59, 54 | 0d |
| 61 |  | 完成打印和通讯 | 0d | 2018-03-09 17:00 | 2018-03-09 17:00 | 60 | 0d |
| 62 | 1.6 | **注册/RSVP** | 15.5d? | 2018-03-12 08:00 | 2018-04-02 12:00 |  | 0d |
| 63 |  | 根据目标听众制作请柬列表 | 2d? | 2018-03-12 08:00 | 2018-03-13 17:00 | 61 | 0d |
| 64 |  | 购买直接邮件列表(如果适用) | 2d? | 2018-03-12 08:00 | 2018-03-13 17:00 | 61 | 0d |
| 65 |  | 发送请柬 | 1d? | 2018-03-14 08:00 | 2018-03-14 17:00 | 64, 63 | 0d |
| 66 |  | 收集 RSVP | 10d? | 2018-03-15 08:00 | 2018-03-28 17:00 | 63, 65 | 0d |
| 67 |  | 通知/发布 RSVP 列表(如果需要) | 0.5d? | 2018-03-29 08:00 | 2018-03-29 12:00 | 66 | 2d |
| 68 |  | 制作姓名标签 | 2d? | 2018-03-29 08:00 | 2018-03-30 17:00 | 66 | 0.5d |
| 69 |  | 制作座位表 | 0.5d? | 2018-03-29 08:00 | 2018-03-29 12:00 | 66 | 0d |
| 70 |  | 进行员工工作分配 | 1d? | 2018-03-29 13:00 | 2018-03-30 12:00 | 69 | 0d |

| ID | WBS | Task | Duration | Start | Finish | Predecessors | Total float |
| --- | --- | --- | --- | --- | --- | --- | --- |
| 71 |  | 提供箱子 | 0.5d? | 2018-03-30 13:00 | 2018-03-30 17:00 | 70 | 0d |
| 72 |  | 请求并获取登记台志愿者 | 0.5d? | 2018-04-02 08:00 | 2018-04-02 12:00 | 71 | 0d |
| 73 |  | 完成注册/RSVP | 0d | 2018-04-02 12:00 | 2018-04-02 12:00 | 72, 67, 68 | 0d |
| 74 | 1.7 | **订购装饰品和音视频设备** | 6.5d? | 2018-02-09 08:00 | 2018-02-19 12:00 |  | 37.6d |
| 75 |  | 确定布置所需物品 | 2d? | 2018-02-09 08:00 | 2018-02-12 17:00 | 34 | 37.6d |
| 76 |  | 桌椅 | 1d? | 2018-02-13 08:00 | 2018-02-13 17:00 | 75 | 37.6d |
| 77 |  | 亚麻布 | 1d? | 2018-02-14 08:00 | 2018-02-14 17:00 | 76 | 37.6d |
| 78 |  | 中心装饰品 | 1d? | 2018-02-15 08:00 | 2018-02-15 17:00 | 77 | 37.6d |
| 79 |  | 音视频设备 | 1d? | 2018-02-16 08:00 | 2018-02-16 17:00 | 78 | 37.6d |
| 80 |  | 购买任何其他需要的设备 | 0.5d? | 2018-02-19 08:00 | 2018-02-19 12:00 | 79 | 37.6d |
| 81 |  | 完成装饰品/音视频设备 | 0d | 2018-02-19 12:00 | 2018-02-19 12:00 | 80, 34 | 37.6d |
| 82 | 1.8 | **PR/档案** | 8d? | 2018-02-12 13:00 | 2018-02-22 12:00 |  | 34.6d |
| 83 |  | 编写新闻稿 | 2d? | 2018-02-12 13:00 | 2018-02-14 12:00 | 14, 25, 34 | 34.6d |
| 84 |  | 审批新闻稿 | 2d? | 2018-02-14 13:00 | 2018-02-16 12:00 | 83 | 34.6d |
| 85 |  | 向各个群体和新闻媒体发送请柬 | 2d? | 2018-02-16 13:00 | 2018-02-20 12:00 | 84 | 34.6d |
| 86 |  | 制作事件“宣传语” | 2d? | 2018-02-20 13:00 | 2018-02-22 12:00 | 85 | 34.6d |
| 87 |  | 发送新闻稿 | 0.5d? | 2018-02-16 13:00 | 2018-02-16 17:00 | 84 | 36.1d |
| 88 |  | 收集新闻剪辑 | 2d? | 2018-02-19 08:00 | 2018-02-20 17:00 | 87 | 36.1d |
| 89 |  | 完成 PR/归档 | 0d | 2018-02-22 12:00 | 2018-02-22 12:00 | 88, 86 | 34.6d |
| 90 | 1.9 | **计划赠品** | 7d? | 2018-01-30 13:00 | 2018-02-08 12:00 |  | 44.6d |
| 91 |  | 确定赠品 | 2d? | 2018-01-30 13:00 | 2018-02-01 12:00 | 14 | 44.6d |
| 92 |  | 确定行动动员 | 1d? | 2018-02-01 13:00 | 2018-02-02 12:00 | 91 | 44.6d |
| 93 |  | 确定赠品过程 | 1d? | 2018-02-02 13:00 | 2018-02-05 12:00 | 92 | 44.6d |
| 94 |  | 购买/订购赠品 | 2d? | 2018-02-05 13:00 | 2018-02-07 12:00 | 93 | 44.6d |
| 95 |  | 执行赠品 | 1d? | 2018-02-07 13:00 | 2018-02-08 12:00 | 94 | 44.6d |
| 96 |  | 完成赠品 | 0d | 2018-02-08 12:00 | 2018-02-08 12:00 | 95 | 44.6d |
| 97 | 1.10 | **运输事件材料** | 1d? | 2018-03-12 08:00 | 2018-03-12 17:00 |  | 14.5d |
| 98 |  | 运输说明 – 事件接收、存储、日期要求和运输 | 0.5d? | 2018-03-12 08:00 | 2018-03-12 12:00 | 61 | 14.5d |
| 99 |  | 运输材料 | 0.5d? | 2018-03-12 13:00 | 2018-03-12 17:00 | 98 | 14.5d |
| 100 |  | 运输必要的支持设备 | 0.5d? | 2018-03-12 13:00 | 2018-03-12 17:00 | 98 | 14.5d |
| 101 |  | 完成运输 | 0d | 2018-03-12 17:00 | 2018-03-12 17:00 | 99, 100 | 14.5d |
| 102 | 1.11 | **管理事件日** | 2.1d? | 2018-04-02 13:00 | 2018-04-04 13:48 |  | 0d |
| 103 |  | 检查设备 | 0.1d? | 2018-04-02 13:00 | 2018-04-02 13:48 | 101, 73 | 0d |
| 104 |  | 管理布置 | 0.1d? | 2018-04-02 13:48 | 2018-04-02 14:36 | 103 | 0d |
| 105 |  | 管理注册 | 0.1d? | 2018-04-02 14:36 | 2018-04-02 15:24 | 104 | 0d |
| 106 |  | 管理供应商 | 0.1d? | 2018-04-02 15:24 | 2018-04-02 16:12 | 105 | 0d |
| 107 |  | 管理演讲者 | 0.1d? | 2018-04-02 16:12 | 2018-04-02 17:00 | 106 | 0d |
| 108 |  | 保持事件 | 1d? | 2018-04-03 08:00 | 2018-04-03 17:00 | 107 | 0d |
| 109 |  | 管理拆卸 | 0.1d? | 2018-04-04 08:00 | 2018-04-04 08:48 | 108 | 0d |
| 110 |  | 传送销售线索 | 0.5d? | 2018-04-04 08:48 | 2018-04-04 13:48 | 109 | 0d |
| 111 |  | 完成事件日 | 0d | 2018-04-04 13:48 | 2018-04-04 13:48 | 110 | 0d |
| 112 | 1.12 | **评估事件成功** | 5.5d? | 2018-04-04 13:48 | 2018-04-12 08:48 |  | 0d |
| 113 |  | 管理和评估 | 2d? | 2018-04-04 13:48 | 2018-04-06 13:48 | 111 | 0d |
| 114 |  | 最终确定合同 | 2d? | 2018-04-06 13:48 | 2018-04-10 13:48 | 113 | 0d |
| 115 |  | 答谢辞 | 1d? | 2018-04-06 13:48 | 2018-04-09 13:48 | 113 | 2.5d |
| 116 |  | 听取演讲者事件汇报等 | 1d? | 2018-04-06 13:48 | 2018-04-09 13:48 | 113 | 1.5d |
| 117 |  | 听取事件工作组事件汇报 | 1d? | 2018-04-06 13:48 | 2018-04-09 13:48 | 113 | 1.5d |
| 118 |  | 计算事件总预算 | 0.5d? | 2018-04-10 13:48 | 2018-04-11 08:48 | 113, 114 | 0d |
| 119 |  | 确定事件成功 | 1d? | 2018-04-11 08:48 | 2018-04-12 08:48 | 118, 116, 117 | 0d |
| 120 |  | 完成评估事件成功 | 0d | 2018-04-12 08:48 | 2018-04-12 08:48 | 119, 115 | 0d |
| 121 |  | 完成营销事件策划和执行项目 | 0d | 2018-04-12 08:48 | 2018-04-12 08:48 | 120 | 0d |

## Version 2 (saved 2018-02-07)

Last finish 2018-04-12 → 2018-04-27 (+15d).

Changed:

| ID | Task | Start | Finish | Duration | Total float | Predecessors |
| --- | --- | --- | --- | --- | --- | --- |
| 1 | **策划和执行营销事件** |  | 2018-04-12 08:48 → 2018-04-27 13:48 (+15d) | 53.1d? → 64.6d? |  |  |
| 2 | **确定和策划事件** |  | 2018-02-08 17:00 → 2018-03-05 12:00 (+25d) | 9d? → 25.5d? |  |  |
| 3 | 选择事件类型 |  | 2018-01-29 17:00 → 2018-01-30 17:00 (+1d) | 1d? → 2d? | 44.1d → 37.1d |  |
| 4 | 确定目标听众 | 2018-01-30 08:00 → 2018-01-31 08:00 (+1d) | 2018-01-30 12:00 → 2018-01-31 17:00 (+1d) | 0.5d? → 1d? | 44.1d → 37.1d |  |
| 5 | 确定需求生成过程 | 2018-01-30 13:00 → 2018-02-05 08:00 (+6d) | 2018-02-01 12:00 → 2018-02-06 17:00 (+5d) |  | 44.1d → 39.1d |  |
| 6 | 确定事件目标 | 2018-01-30 13:00 → 2018-02-01 08:00 (+2d) | 2018-01-31 12:00 → 2018-02-02 17:00 (+2d) | 1d? → 2d? | 1d → 41.1d |  |
| 7 | 陈述总体事件主题 | 2018-02-01 13:00 → 2018-02-07 08:00 (+6d) | 2018-02-06 12:00 → 2018-02-20 17:00 (+14d) | 3d? → 5d? | 44.1d → 39.1d |  |
| 8 | 确定初步事件日期和时间 | 2018-02-06 13:00 → 2018-02-22 13:00 (+16d) | 2018-02-06 17:00 → 2018-02-23 12:00 (+17d) | 0.5d? → 1d? | 44.1d → 39.1d |  |
| 9 | 确定事件工作组 | 2018-02-07 08:00 → 2018-02-23 13:00 (+16d) | 2018-02-07 12:00 → 2018-02-26 17:00 (+19d) | 0.5d? → 1d? | 44.1d → 39.1d |  |
| 10 | 制定事件日程 | 2018-02-07 13:00 → 2018-03-02 08:00 (+23d) | 2018-02-07 17:00 → 2018-03-02 12:00 (+23d) |  | 44.1d → 39.1d |  |
| 11 | 确定交流过程和机制 | 2018-02-08 08:00 → 2018-03-02 13:00 (+22d) | 2018-02-08 17:00 → 2018-03-05 12:00 (+25d) |  | 44.1d → 39.1d |  |
| 13 | 确定事件预算 | 2018-01-30 08:00 → 2018-01-31 08:00 (+1d) | 2018-01-30 12:00 → 2018-01-31 12:00 (+1d) |  |  |  |
| 14 | 完成事件策划 | 2018-01-30 12:00 → 2018-01-31 12:00 (+1d) | 2018-01-30 12:00 → 2018-01-31 12:00 (+1d) |  |  |  |
| 15 | **选择演讲者** | 2018-01-30 13:00 → 2018-01-31 13:00 (+1d) | 2018-02-12 12:00 → 2018-02-15 17:00 (+3d) | 9d? → 11.5d? |  |  |
| 16 | 选择陈述主题 | 2018-01-30 13:00 → 2018-01-31 13:00 (+1d) | 2018-01-30 17:00 → 2018-01-31 17:00 (+1d) |  |  |  |
| 17 | 确定演讲者 | 2018-01-31 08:00 → 2018-02-01 08:00 (+1d) | 2018-02-02 17:00 → 2018-02-05 17:00 (+3d) |  |  |  |
| 18 | 获取演讲者信息 | 2018-02-05 08:00 → 2018-02-07 13:00 (+2d) | 2018-02-05 17:00 → 2018-02-08 12:00 (+3d) |  |  |  |
| 19 | 确认演讲者和详细信息 | 2018-02-06 08:00 → 2018-02-09 13:00 (+3d) | 2018-02-06 12:00 → 2018-02-09 17:00 (+3d) |  |  |  |
| 20 | 开发脚本 | 2018-02-06 13:00 → 2018-02-12 08:00 (+6d) | 2018-02-08 12:00 → 2018-02-13 17:00 (+5d) |  |  |  |
| 21 | 发送公共交通和事件详细信息 | 2018-02-08 13:00 → 2018-02-14 08:00 (+6d) | 2018-02-08 17:00 → 2018-02-14 12:00 (+6d) |  |  |  |
| 22 | 确认演讲者到达时间 | 2018-02-09 08:00 → 2018-02-14 13:00 (+5d) | 2018-02-09 12:00 → 2018-02-14 17:00 (+5d) |  |  |  |
| 23 | 安排演讲者报酬 | 2018-02-09 13:00 → 2018-02-15 08:00 (+6d) | 2018-02-09 17:00 → 2018-02-15 12:00 (+6d) |  |  |  |
| 24 | 获得演讲者的酬谢礼物 | 2018-02-12 08:00 → 2018-02-15 13:00 (+3d) | 2018-02-12 12:00 → 2018-02-15 17:00 (+3d) |  |  |  |
| 25 | 完成演讲者选择 | 2018-02-12 12:00 → 2018-02-15 17:00 (+3d) | 2018-02-12 12:00 → 2018-02-15 17:00 (+3d) |  |  |  |
| 26 | **选择地点** | 2018-01-30 13:00 → 2018-01-31 13:00 (+1d) | 2018-02-08 17:00 → 2018-02-15 17:00 (+7d) | 7.5d? → 11.5d? | 1.5d → 0d |  |
| 27 | 访问位置 | 2018-01-30 13:00 → 2018-02-01 08:00 (+2d) | 2018-01-31 12:00 → 2018-02-01 17:00 (+1d) |  | 2.5d → 3.5d |  |
| 28 | 审阅目标听众和预测的出席人员 | 2018-01-30 13:00 → 2018-01-31 13:00 (+1d) | 2018-02-01 12:00 → 2018-02-07 12:00 (+6d) |  | 1.5d → 0d |  |
| 29 | 选择事件位置 | 2018-02-01 13:00 → 2018-02-08 13:00 (+7d) | 2018-02-02 12:00 → 2018-02-09 12:00 (+7d) |  | 1.5d → 0d |  |
| 30 | 签署地点合同 | 2018-02-02 13:00 → 2018-02-09 13:00 (+7d) | 2018-02-06 12:00 → 2018-02-13 12:00 (+7d) |  | 1.5d → 0d |  |
| 31 | 进行现场排练 | 2018-02-06 13:00 → 2018-02-13 13:00 (+7d) | 2018-02-07 12:00 → 2018-02-14 12:00 (+7d) |  | 1.5d → 0d |  |
| 32 | 确认详细信息 | 2018-02-07 13:00 → 2018-02-14 13:00 (+7d) | 2018-02-08 12:00 → 2018-02-15 12:00 (+7d) |  | 1.5d → 0d |  |
| 33 | 后续工作 | 2018-02-08 13:00 → 2018-02-15 13:00 (+7d) | 2018-02-08 17:00 → 2018-02-15 17:00 (+7d) |  | 1.5d → 0d |  |
| 34 | 完成地点选择 | 2018-02-08 17:00 → 2018-02-15 17:00 (+7d) | 2018-02-08 17:00 → 2018-02-15 17:00 (+7d) |  | 1.5d → 0d |  |
| 35 | **选择和管理饮食招待** | 2018-02-09 08:00 → 2018-02-16 08:00 (+7d) | 2018-02-21 17:00 → 2018-03-09 17:00 (+16d) | 9d? → 16d? | 35.1d → 34.6d |  |
| 36 | 选择食品选项 | 2018-02-09 08:00 → 2018-02-16 08:00 (+7d) | 2018-02-12 17:00 → 2018-02-19 17:00 (+7d) |  | 35.1d → 35d |  |
| 37 | 获取饮食招待报价 | 2018-02-13 08:00 → 2018-02-20 08:00 (+7d) | 2018-02-14 17:00 → 2018-02-21 17:00 (+7d) |  | 35.1d → 35d |  |
| 38 | 修改菜单项 | 2018-02-15 08:00 → 2018-02-26 08:00 (+11d) | 2018-02-15 17:00 → 2018-02-26 17:00 (+11d) |  | 35.1d → 35d |  |
| 39 | 安排食品口味(如果需要) | 2018-02-16 08:00 → 2018-03-01 08:00 (+13d) | 2018-02-16 17:00 → 2018-03-01 17:00 (+13d) |  | 35.1d → 35d |  |
| 40 | 签署饮食招待合同 | 2018-02-19 08:00 → 2018-03-02 08:00 (+11d) | 2018-02-19 12:00 → 2018-03-02 12:00 (+11d) |  | 35.1d → 35d |  |
| 41 | 确认详细信息 | 2018-02-19 13:00 → 2018-03-02 13:00 (+11d) | 2018-02-19 17:00 → 2018-03-02 17:00 (+11d) |  | 35.1d → 35d |  |
| 42 | 进行事件日到达、布置、事件管理、拆卸 | 2018-02-20 08:00 → 2018-03-08 08:00 (+16d) | 2018-02-20 17:00 → 2018-03-08 17:00 (+16d) |  | 35.1d → 34.6d |  |
| 43 | 与供应商一起审阅详细信息 | 2018-02-21 08:00 → 2018-03-09 08:00 (+16d) | 2018-02-21 12:00 → 2018-03-09 12:00 (+16d) |  | 35.1d → 34.6d |  |
| 44 | 安排供应商付款 | 2018-02-21 13:00 → 2018-03-09 13:00 (+16d) | 2018-02-21 17:00 → 2018-03-09 17:00 (+16d) |  | 35.1d → 34.6d |  |
| 45 | 完成饮食招待 | 2018-02-21 17:00 → 2018-03-09 17:00 (+16d) | 2018-02-21 17:00 → 2018-03-09 17:00 (+16d) |  | 35.1d → 34.6d |  |
| 46 | **打印和通讯** | 2018-02-12 13:00 → 2018-02-16 08:00 (+4d) | 2018-03-09 17:00 → 2018-03-15 17:00 (+6d) | 19.5d? → 20d? |  |  |
| 47 | 确定请柬样式 | 2018-02-12 13:00 → 2018-02-16 08:00 (+4d) | 2018-02-14 12:00 → 2018-02-19 17:00 (+5d) |  |  |  |
| 48 | 发送保存日期消息(如果需要) | 2018-02-14 13:00 → 2018-02-20 08:00 (+6d) | 2018-02-14 17:00 → 2018-02-20 12:00 (+6d) |  |  |  |
| 49 | 编写请柬消息 | 2018-02-15 08:00 → 2018-02-20 13:00 (+5d) | 2018-02-16 17:00 → 2018-02-22 12:00 (+6d) |  |  |  |
| 50 | 设计请柬 | 2018-02-19 08:00 → 2018-02-22 13:00 (+3d) | 2018-02-20 17:00 → 2018-02-26 12:00 (+6d) |  |  |  |
| 51 | 获取请柬批准 | 2018-02-21 08:00 → 2018-02-26 13:00 (+5d) | 2018-02-22 17:00 → 2018-02-28 17:00 (+6d) | 2d? → 2.5d? |  |  |
| 52 | 创建事件提醒副本 | 2018-02-23 08:00 → 2018-03-01 08:00 (+6d) | 2018-02-23 17:00 → 2018-03-01 17:00 (+6d) |  |  |  |
| 53 | 设计事件提醒 | 2018-02-26 08:00 → 2018-03-02 08:00 (+4d) | 2018-02-26 17:00 → 2018-03-02 17:00 (+4d) |  |  |  |
| 54 | 发送事件提醒 | 2018-02-27 08:00 → 2018-03-05 08:00 (+6d) | 2018-02-27 12:00 → 2018-03-05 12:00 (+6d) |  |  |  |
| 55 | 材料副本创建日 | 2018-02-27 13:00 → 2018-03-05 13:00 (+6d) | 2018-03-01 12:00 → 2018-03-07 12:00 (+6d) |  |  |  |
| 56 | 材料设计日 | 2018-03-01 13:00 → 2018-03-07 13:00 (+6d) | 2018-03-05 12:00 → 2018-03-09 12:00 (+4d) |  |  |  |
| 57 | 材料打印日 | 2018-03-05 13:00 → 2018-03-09 13:00 (+4d) | 2018-03-08 12:00 → 2018-03-14 12:00 (+6d) |  |  |  |
| 58 | 材料组装日 | 2018-03-08 13:00 → 2018-03-14 13:00 (+6d) | 2018-03-08 17:00 → 2018-03-14 17:00 (+6d) |  |  |  |
| 59 | 与供应商一起审阅 | 2018-03-09 08:00 → 2018-03-15 08:00 (+6d) | 2018-03-09 12:00 → 2018-03-15 12:00 (+6d) |  |  |  |
| 60 | 安排供应商付款 | 2018-03-09 13:00 → 2018-03-15 13:00 (+6d) | 2018-03-09 17:00 → 2018-03-15 17:00 (+6d) |  |  |  |
| 61 | 完成打印和通讯 | 2018-03-09 17:00 → 2018-03-15 17:00 (+6d) | 2018-03-09 17:00 → 2018-03-15 17:00 (+6d) |  |  |  |
| 62 | **注册/RSVP** | 2018-03-12 08:00 → 2018-03-16 08:00 (+4d) | 2018-04-02 12:00 → 2018-04-12 17:00 (+10d) | 15.5d? → 20d? | 0d → 1d |  |
| 63 | 根据目标听众制作请柬列表 | 2018-03-12 08:00 → 2018-03-16 08:00 (+4d) | 2018-03-13 17:00 → 2018-03-19 17:00 (+6d) |  | 0d → 3d |  |
| 64 | 购买直接邮件列表(如果适用) | 2018-03-12 08:00 → 2018-03-20 13:00 (+8d) | 2018-03-13 17:00 → 2018-03-22 12:00 (+9d) |  | 0d → 0.5d |  |
| 65 | 发送请柬 | 2018-03-14 08:00 → 2018-03-22 13:00 (+8d) | 2018-03-14 17:00 → 2018-03-23 12:00 (+9d) |  | 0d → 0.5d |  |
| 66 | 收集 RSVP | 2018-03-15 08:00 → 2018-03-23 13:00 (+8d) | 2018-03-28 17:00 → 2018-04-06 12:00 (+9d) |  | 0d → 0.5d |  |
| 67 | 通知/发布 RSVP 列表(如果需要) | 2018-03-29 08:00 → 2018-04-09 08:00 (+11d) | 2018-03-29 12:00 → 2018-04-09 12:00 (+11d) |  | 2d → 3.5d |  |
| 68 | 制作姓名标签 | 2018-03-29 08:00 → 2018-04-11 08:00 (+13d) | 2018-03-30 17:00 → 2018-04-12 17:00 (+13d) |  | 0.5d → 1d |  |
| 69 | 制作座位表 | 2018-03-29 08:00 → 2018-04-06 13:00 (+8d) | 2018-03-29 12:00 → 2018-04-06 17:00 (+8d) |  | 0d → 3d |  |
| 70 | 进行员工工作分配 | 2018-03-29 13:00 → 2018-04-09 08:00 (+11d) | 2018-03-30 12:00 → 2018-04-09 17:00 (+10d) |  | 0d → 3d |  |
| 71 | 提供箱子 | 2018-03-30 13:00 → 2018-04-10 08:00 (+11d) | 2018-03-30 17:00 → 2018-04-10 12:00 (+11d) |  | 0d → 3d | 70 → 70, 67 |

| ID | Task | Start | Finish | Duration | Total float |
| --- | --- | --- | --- | --- | --- |
| 72 | 请求并获取登记台志愿者 | 2018-04-02 08:00 → 2018-04-10 13:00 (+8d) | 2018-04-02 12:00 → 2018-04-10 17:00 (+8d) |  | 0d → 3d |
| 73 | 完成注册/RSVP | 2018-04-02 12:00 → 2018-04-12 17:00 (+10d) | 2018-04-02 12:00 → 2018-04-12 17:00 (+10d) |  | 0d → 1d |
| 74 | **订购装饰品和音视频设备** | 2018-02-09 08:00 → 2018-02-22 08:00 (+13d) | 2018-02-19 12:00 → 2018-04-16 14:36 (+56d) | 6.5d? → 37.7d? | 37.6d → 8.9d |
| 75 | 确定布置所需物品 | 2018-02-09 08:00 → 2018-02-22 08:00 (+13d) | 2018-02-12 17:00 → 2018-02-23 17:00 (+11d) |  | 37.6d → 10d |
| 76 | 桌椅 | 2018-02-13 08:00 → 2018-02-27 08:00 (+14d) | 2018-02-13 17:00 → 2018-02-27 17:00 (+14d) |  | 37.6d → 9d |
| 77 | 亚麻布 | 2018-02-14 08:00 → 2018-03-01 08:00 (+15d) | 2018-02-14 17:00 → 2018-03-01 17:00 (+15d) |  | 37.6d → 9d |
| 78 | 中心装饰品 | 2018-02-15 08:00 → 2018-03-07 08:00 (+20d) | 2018-02-15 17:00 → 2018-03-07 17:00 (+20d) |  | 37.6d → 9d |
| 79 | 音视频设备 | 2018-02-16 08:00 → 2018-03-09 08:00 (+21d) | 2018-02-16 17:00 → 2018-03-09 17:00 (+21d) |  | 37.6d → 9d |
| 80 | 购买任何其他需要的设备 | 2018-02-19 08:00 → 2018-04-16 09:36 (+56d) | 2018-02-19 12:00 → 2018-04-16 14:36 (+56d) |  | 37.6d → 8.9d |
| 81 | 完成装饰品/音视频设备 | 2018-02-19 12:00 → 2018-04-16 14:36 (+56d) | 2018-02-19 12:00 → 2018-04-16 14:36 (+56d) |  | 37.6d → 8.9d |
| 82 | **PR/档案** | 2018-02-12 13:00 → 2018-02-16 08:00 (+4d) | 2018-02-22 12:00 → 2018-03-20 12:00 (+26d) | 8d? → 22.5d? | 34.6d → 28.1d |
| 83 | 编写新闻稿 | 2018-02-12 13:00 → 2018-02-16 08:00 (+4d) | 2018-02-14 12:00 → 2018-02-19 17:00 (+5d) |  | 34.6d → 28.1d |
| 84 | 审批新闻稿 | 2018-02-14 13:00 → 2018-02-20 08:00 (+6d) | 2018-02-16 12:00 → 2018-02-22 17:00 (+6d) | 2d? → 3d? | 34.6d → 28.1d |
| 85 | 向各个群体和新闻媒体发送请柬 | 2018-02-16 13:00 → 2018-03-02 08:00 (+14d) | 2018-02-20 12:00 → 2018-03-06 17:00 (+14d) |  | 34.6d → 32.6d |
| 86 | 制作事件“宣传语” | 2018-02-20 13:00 → 2018-03-12 08:00 (+20d) | 2018-02-22 12:00 → 2018-03-13 17:00 (+19d) |  | 34.6d → 32.6d |
| 87 | 发送新闻稿 | 2018-02-16 13:00 → 2018-02-23 08:00 (+7d) | 2018-02-16 17:00 → 2018-02-23 12:00 (+7d) |  | 36.1d → 28.1d |
| 88 | 收集新闻剪辑 | 2018-02-19 08:00 → 2018-03-14 08:00 (+23d) | 2018-02-20 17:00 → 2018-03-20 12:00 (+28d) |  | 36.1d → 28.1d |
| 89 | 完成 PR/归档 | 2018-02-22 12:00 → 2018-03-20 12:00 (+26d) | 2018-02-22 12:00 → 2018-03-20 12:00 (+26d) |  | 34.6d → 28.1d |
| 90 | **计划赠品** | 2018-01-30 13:00 → 2018-02-07 08:00 (+8d) | 2018-02-08 12:00 → 2018-04-17 14:36 (+68d) | 7d? → 49.7d? | 44.6d → 7.9d |
| 91 | 确定赠品 | 2018-01-30 13:00 → 2018-02-07 08:00 (+8d) | 2018-02-01 12:00 → 2018-02-08 17:00 (+7d) |  | 44.6d → 10d |
| 92 | 确定行动动员 | 2018-02-01 13:00 → 2018-02-23 13:00 (+22d) | 2018-02-02 12:00 → 2018-02-26 12:00 (+24d) |  | 44.6d → 9.5d |
| 93 | 确定赠品过程 | 2018-02-02 13:00 → 2018-02-28 08:00 (+26d) | 2018-02-05 12:00 → 2018-02-28 17:00 (+23d) |  | 44.6d → 8d |
| 94 | 购买/订购赠品 | 2018-02-05 13:00 → 2018-03-01 08:00 (+24d) | 2018-02-07 12:00 → 2018-03-02 17:00 (+23d) |  | 44.6d → 8d |
| 95 | 执行赠品 | 2018-02-07 13:00 → 2018-04-16 14:36 (+68d) | 2018-02-08 12:00 → 2018-04-17 14:36 (+68d) |  | 44.6d → 7.9d |
| 96 | 完成赠品 | 2018-02-08 12:00 → 2018-04-17 14:36 (+68d) | 2018-02-08 12:00 → 2018-04-17 14:36 (+68d) |  | 44.6d → 7.9d |
| 97 | **运输事件材料** | 2018-03-12 08:00 → 2018-04-09 13:00 (+28d) | 2018-03-12 17:00 → 2018-04-13 17:00 (+32d) | 1d? → 4.5d? | 14.5d → 0d |
| 98 | 运输说明 – 事件接收、存储、日期要求和运输 | 2018-03-12 08:00 → 2018-04-09 13:00 (+28d) | 2018-03-12 12:00 → 2018-04-09 17:00 (+28d) |  | 14.5d → 0d |
| 99 | 运输材料 | 2018-03-12 13:00 → 2018-04-13 08:00 (+32d) | 2018-03-12 17:00 → 2018-04-13 12:00 (+32d) |  | 14.5d → 0.5d |
| 100 | 运输必要的支持设备 | 2018-03-12 13:00 → 2018-04-13 13:00 (+32d) | 2018-03-12 17:00 → 2018-04-13 17:00 (+32d) |  | 14.5d → 0d |
| 101 | 完成运输 | 2018-03-12 17:00 → 2018-04-13 17:00 (+32d) | 2018-03-12 17:00 → 2018-04-13 17:00 (+32d) |  | 14.5d → 0d |
| 102 | **管理事件日** | 2018-04-02 13:00 → 2018-04-16 08:00 (+14d) | 2018-04-04 13:48 → 2018-04-18 08:48 (+14d) |  |  |
| 103 | 检查设备 | 2018-04-02 13:00 → 2018-04-16 08:00 (+14d) | 2018-04-02 13:48 → 2018-04-16 08:48 (+14d) |  |  |
| 104 | 管理布置 | 2018-04-02 13:48 → 2018-04-16 08:48 (+14d) | 2018-04-02 14:36 → 2018-04-16 09:36 (+14d) |  |  |
| 105 | 管理注册 | 2018-04-02 14:36 → 2018-04-16 09:36 (+14d) | 2018-04-02 15:24 → 2018-04-16 10:24 (+14d) |  |  |
| 106 | 管理供应商 | 2018-04-02 15:24 → 2018-04-16 10:24 (+14d) | 2018-04-02 16:12 → 2018-04-16 11:12 (+14d) |  |  |
| 107 | 管理演讲者 | 2018-04-02 16:12 → 2018-04-16 11:12 (+14d) | 2018-04-02 17:00 → 2018-04-16 12:00 (+14d) |  |  |
| 108 | 保持事件 | 2018-04-03 08:00 → 2018-04-16 13:00 (+13d) | 2018-04-03 17:00 → 2018-04-17 12:00 (+14d) |  |  |
| 109 | 管理拆卸 | 2018-04-04 08:00 → 2018-04-17 13:00 (+13d) | 2018-04-04 08:48 → 2018-04-17 13:48 (+13d) |  |  |
| 110 | 传送销售线索 | 2018-04-04 08:48 → 2018-04-17 13:48 (+13d) | 2018-04-04 13:48 → 2018-04-18 08:48 (+14d) |  |  |
| 111 | 完成事件日 | 2018-04-04 13:48 → 2018-04-18 08:48 (+14d) | 2018-04-04 13:48 → 2018-04-18 08:48 (+14d) |  |  |
| 112 | **评估事件成功** | 2018-04-04 13:48 → 2018-04-18 08:48 (+14d) | 2018-04-12 08:48 → 2018-04-27 13:48 (+15d) | 5.5d? → 7.5d? |  |
| 113 | 管理和评估 | 2018-04-04 13:48 → 2018-04-18 08:48 (+14d) | 2018-04-06 13:48 → 2018-04-20 08:48 (+14d) |  |  |
| 114 | 最终确定合同 | 2018-04-06 13:48 → 2018-04-20 08:48 (+14d) | 2018-04-10 13:48 → 2018-04-24 08:48 (+14d) |  | 0d → 1d |
| 115 | 答谢辞 | 2018-04-06 13:48 → 2018-04-23 08:48 (+17d) | 2018-04-09 13:48 → 2018-04-24 08:48 (+15d) |  | 2.5d → 3.5d |
| 116 | 听取演讲者事件汇报等 | 2018-04-06 13:48 → 2018-04-25 13:48 (+19d) | 2018-04-09 13:48 → 2018-04-26 13:48 (+17d) |  | 1.5d → 0d |
| 117 | 听取事件工作组事件汇报 | 2018-04-06 13:48 → 2018-04-20 08:48 (+14d) | 2018-04-09 13:48 → 2018-04-25 08:48 (+16d) | 1d? → 2d? |  |
| 118 | 计算事件总预算 | 2018-04-10 13:48 → 2018-04-25 08:48 (+15d) | 2018-04-11 08:48 → 2018-04-25 13:48 (+14d) |  | 0d → 1d |
| 119 | 确定事件成功 | 2018-04-11 08:48 → 2018-04-26 13:48 (+15d) | 2018-04-12 08:48 → 2018-04-27 13:48 (+15d) |  |  |
| 120 | 完成评估事件成功 | 2018-04-12 08:48 → 2018-04-27 13:48 (+15d) | 2018-04-12 08:48 → 2018-04-27 13:48 (+15d) |  |  |
| 121 | 完成营销事件策划和执行项目 | 2018-04-12 08:48 → 2018-04-27 13:48 (+15d) | 2018-04-12 08:48 → 2018-04-27 13:48 (+15d) |  |  |
